# Lab6-EDT-Secuencia-Actividades-Proyecto-Tacogos

Schedule from MS Project, 2024-06-03 to 2026-02-03, status date 2024-05-13, costs in €.

## Calendars

- Estándar: Mon-Thu 09:00-13:00, 15:00-19:00; Fri 08:00-15:00; Sat-Sun off. Exceptions (off unless hours are given): 2024-07-09 to 2027-05-20 (Fiestas Talavera, recurring).

## Resources

| Resource | Rate | Cost per use |
| --- | --- | --- |
| Analistas de datos | 12 | 1500 |
| Equipo de desarrollo | 40 | 1500 |
| Equipo de Gestión de Proyectos | 100 | 1200 |
| Equipo de despliegue | 24 | 800 |
| Equipo de Recursos Humanos | 11 | 1000 |
| Equipo de Negocios y Relaciones Corporativas | 40 | 1100 |

## Schedule

| ID | WBS | Task | Duration | Start | Finish | Predecessors | Baseline start | Baseline finish | Baseline duration | Total slack | Free slack | Resources | Work | Cost | Baseline cost |
| --- | --- | --- | --- | --- | --- | --- | --- | --- | --- | --- | --- | --- | --- | --- | --- |
| 1 | 1 | **Proyecto Taco Gos** | 425.12d | 2024-06-03 | 2026-02-03 |  | 2024-06-03 | 2026-02-03 | 424.25d | 0d |  |  | 5981.23h | 429,495.12 | 429,064.72 |
| 2 | 1.1 | **Plan de Negocio de Taco Gos** | 28d | 2024-06-03 | 2024-07-11 |  | 2024-06-03 | 2024-07-11 | 27.88d | 11.88d |  | Equipo de Negocios y Relaciones Corporativas | 307h | 16,473 | 16,313 |
| 3 | 1.1.1 | Reunion con cliente | 3h | 2024-06-03 | 2024-06-03 |  | 2024-06-03 | 2024-06-03 | 3h | 11.88d | 0d | Equipo de Negocios y Relaciones Corporativas | 3h | 1,238 | 1,238 |
| 4 | 1.1.2 | Realización del plan de negocio | 9d | 2024-07-01 | 2024-07-11 | 3 | 2024-07-01 | 2024-07-11 | 8.75d | 11.88d |  | Equipo de Negocios y Relaciones Corporativas | 72h | 4,270 | 4,190 |
| 5 | 1.2 | **Acuerdos de Colaboracion** | 94.62d | 2024-07-30 | 2024-12-11 | 2 | 2024-07-29 | 2024-12-11 | 95.12d | 0d |  | Equipo de Negocios y Relaciones Corporativas | 1296h | 72,220 | 72,261.6 |
| 6 | 1.2.1 | Acuerdo con OpenAI | 13d | 2024-07-30 | 2024-08-15 |  | 2024-07-29 | 2024-08-15 | 12.63d | 0.12d | 0d | Equipo de Negocios y Relaciones Corporativas | 104h | 5,550 | 5,431.6 |
| 7 | 1.2.2 | Acuerdo con Amazon | 35d | 2024-09-02 | 2024-10-22 | 6 | 2024-09-02 | 2024-10-22 | 35d | 0.12d | 0d | Equipo de Negocios y Relaciones Corporativas | 280h | 13,210 | 13,210 |
| 8 | 1.2.3 | Acuerdo con Mercadona | 9d | 2024-11-01 | 2024-11-14 | 7 | 2024-11-01 | 2024-11-14 | 9d | 0.12d | 0d | Equipo de Negocios y Relaciones Corporativas | 72h | 4,565 | 4,565 |
| 9 | 1.2.4 | Acuerdo con UCLM | 4d | 2024-12-02 | 2024-12-05 | 8 | 2024-12-02 | 2024-12-05 | 4d | 0.12d | 0d | Equipo de Negocios y Relaciones Corporativas | 32h | 2,640 | 2,640 |
| 10 | 1.2.5 | Firmas de acuerdos | 4d | 2024-12-05 | 2024-12-11 | 9, 6, 7, 8 | 2024-12-05 | 2024-12-11 | 4d | 0d |  | Equipo de Negocios y Relaciones Corporativas | 32h | 2,640 | 2,640 |
| 11 | 1.3 | **Implementación de Tecnología Avanzada** | 3d | 2024-12-12 | 2024-12-17 | 5 | 2024-12-12 | 2024-12-17 | 3d | 0d |  | Equipo de desarrollo [70%]; Equipo de Gestión de Proyectos | 63.43h | 25,367.12 | 25,367.12 |
| 12 | 1.3.1 | Realizacion del informe | 3d | 2024-12-12 | 2024-12-17 |  | 2024-12-12 | 2024-12-17 | 3d | 0d | 0.5d | Equipo de Gestión de Proyectos | 24h | 3,780 | 3,780 |
| 13 | 1.4 | **Programas de Prácticas y Desarrollo Educativo** | 7d | 2024-12-17 | 2024-12-26 | 11 | 2024-12-17 | 2024-12-26 | 7d | 0d |  | Equipo de Recursos Humanos | 96h | 11,351 | 11,351 |
| 14 | 1.4.1 | Realizar Documentacion | 6d | 2024-12-17 | 2024-12-26 |  | 2024-12-17 | 2024-12-26 | 6d | 0d | 0.5d | Equipo de Recursos Humanos | 48h | 2,848 | 2,848 |
| 15 | 1.5 | **Informe de Sostenibilidad y Responsabilidad Social Corporativa** | 8d | 2024-12-26 | 2025-01-07 | 13 | 2024-12-26 | 2025-01-07 | 8d | 0d |  | Equipo de Recursos Humanos | 96h | 6,696 | 6,696 |
| 16 | 1.5.1 | Evaluación de impacto ambiental y social | 3d | 2024-12-26 | 2025-01-01 |  | 2024-12-26 | 2025-01-01 | 3d | 0d |  | Equipo de Recursos Humanos | 24h | 1,924 | 1,924 |
| 17 | 1.5.2 | Finalizacion de informe de Sostenibilidad | 3d | 2025-01-01 | 2025-01-07 | 16 | 2025-01-01 | 2025-01-07 | 3d | 0d |  | Equipo de Recursos Humanos | 24h | 1,924 | 1,924 |
| 18 | 1.6 | **Sistema de Gestión de Relaciones con el Cliente (CRM)** | 66.5d | 2025-01-07 | 2025-04-11 | 15 | 2025-01-07 | 2025-04-11 | 66.5d | 0d |  | Equipo de desarrollo [70%] | 854.3h | 48,540 | 48,540 |
| 19 | 1.6.1 | Diseño de requisitos del CRM | 9d | 2025-01-07 | 2025-01-20 |  | 2025-01-07 | 2025-01-20 | 9d | 0d |  | Equipo de desarrollo [70%] | 50.4h | 3,426 | 3,426 |
| 20 | 1.6.2 | Diseño de los modulos del CRM | 9d | 2025-01-20 | 2025-01-31 | 19 | 2025-01-20 | 2025-01-31 | 9d | 0d |  | Equipo de desarrollo [70%] | 50.4h | 3,426 | 3,426 |
| 21 | 1.6.3 | Desarrollo del CRM | 15d | 2025-01-31 | 2025-02-21 | 20 | 2025-01-31 | 2025-02-21 | 15d | 0d |  | Equipo de desarrollo [70%] | 84h | 5,010 | 5,010 |
| 22 | 1.6.4 | Despliegue del CRM | 15d | 2025-02-21 | 2025-03-14 | 21 | 2025-02-21 | 2025-03-14 | 15d | 0d |  | Equipo de despliegue | 120h | 4,520 | 4,520 |
| 23 | 1.6.5 | Implementacion del CRM | 21d | 2025-03-14 | 2025-04-11 | 22 | 2025-03-14 | 2025-04-11 | 21d | 0d |  | Equipo de despliegue | 168h | 6,008 | 6,008 |
| 24 | 1.7 | **Creación de una plataforma de comercio electrónico** | 40.5d | 2025-04-11 | 2025-06-11 | 18 | 2025-04-11 | 2025-06-10 | 39.75d | 0d |  | Equipo de desarrollo [70%] | 547.5h | 27,198 | 26,926 |
| 25 | 1.7.1 | Diseño de requisitos de la plataforma | 3d | 2025-04-11 | 2025-04-16 |  | 2025-04-11 | 2025-04-16 | 3d | 0d |  | Equipo de desarrollo [70%] | 16.8h | 1,926 | 1,926 |
| 26 | 1.7.2 | Diseño de los modulos de la plataforma | 6d | 2025-04-16 | 2025-04-24 | 25 | 2025-04-16 | 2025-04-24 | 6d | 0d |  | Equipo de desarrollo [70%] | 33.6h | 2,802 | 2,802 |
| 27 | 1.7.3 | Desarrollo de la plataforma | 6d | 2025-04-24 | 2025-05-02 | 26 | 2025-04-24 | 2025-05-02 | 5.5d | 0d |  | Equipo de despliegue | 48h | 2,288 | 2,184 |
| 28 | 1.7.4 | Despliegue de la plataforma | 9d | 2025-05-02 | 2025-05-15 | 27 | 2025-05-02 | 2025-05-14 | 9d | 0d |  | Equipo de despliegue | 72h | 2,816 | 2,816 |
| 29 | 1.7.5 | Implementacion de la plataforma | 18d | 2025-05-15 | 2025-06-11 | 28 | 2025-05-15 | 2025-06-10 | 18d | 0d |  | Equipo de despliegue | 144h | 4,832 | 4,832 |

| ID | WBS | Task | Duration | Start | Finish | Predecessors | Baseline start | Baseline finish | Baseline duration | Total slack | Resources | Work | Cost | Baseline cost |
| --- | --- | --- | --- | --- | --- | --- | --- | --- | --- | --- | --- | --- | --- | --- |
| 30 | 1.8 | **Sistema de gestión de proveedores** | 121d | 2025-06-11 | 2025-12-02 | 24 | 2025-06-10 | 2025-12-01 | 120.88d | 0d | Equipo de desarrollo | 2001h | 95,032 | 94,992 |
| 31 | 1.8.1 | Diseño de requisitos del sistema | 9d | 2025-06-11 | 2025-06-24 |  | 2025-06-10 | 2025-06-23 | 9d | 0d | Equipo de desarrollo | 72h | 4,740 | 4,740 |
| 32 | 1.8.2 | Diseño de los modulos del sistema | 12d | 2025-06-24 | 2025-07-10 | 31 | 2025-06-23 | 2025-07-09 | 12d | 0d | Equipo de desarrollo | 96h | 5,820 | 5,820 |
| 33 | 1.8.3 | Desarrollo del sistema | 21d | 2025-07-10 | 2025-08-08 | 32 | 2025-07-09 | 2025-08-07 | 21d | 0d | Equipo de desarrollo | 168h | 9,060 | 9,060 |
| 34 | 1.8.4 | Despliegue del sistema | 21d | 2025-08-08 | 2025-09-05 | 33 | 2025-08-07 | 2025-09-04 | 21d | 0d | Equipo de despliegue | 168h | 6,008 | 6,008 |
| 35 | 1.8.5 | Implementacion del sistema | 63d | 2025-09-05 | 2025-12-02 | 34 | 2025-09-04 | 2025-12-01 | 63d | 0d | Equipo de despliegue | 504h | 16,424 | 16,424 |
| 36 | 1.9 | **Análisis de datos por IA** | 20.5d | 2025-12-02 | 2025-12-31 | 30 | 2025-12-01 | 2025-12-30 | 20.5d | 0d | Analistas de datos | 336h | 17,868 | 17,868 |
| 37 | 1.9.1 | Desarrollo de la IA | 21d | 2025-12-02 | 2025-12-31 |  | 2025-12-01 | 2025-12-30 | 21d | 0d | Analistas de datos | 168h | 8,934 | 8,934 |
| 38 | 1.10 | **Informe de Resultados y Evaluación del Proyecto** | 24d | 2025-12-31 | 2026-02-03 | 36 | 2025-12-30 | 2026-02-03 | 24d | 0d | Equipo de Gestión de Proyectos | 384h | 43,680 | 43,680 |
| 39 | 1.10.1 | Realizacion de informe final | 24d | 2025-12-31 | 2026-02-03 |  | 2025-12-30 | 2026-02-03 | 24d | 0d | Equipo de Gestión de Proyectos | 192h | 21,840 | 21,840 |
